# 车道系统开发项目计划书

How a schedule from MS Project changed from version to version. A marks actual dates.

## Version 1 (saved 2019-01-02)

Note of the change: DOC\开发计划\SAAS项目计划书_V2.0.mpp

| ID | WBS | Task | Duration | Start | Finish | Complete | Total float | Constraint |
| --- | --- | --- | --- | --- | --- | --- | --- | --- |
| 1 |  | 需求分析 | 2d? | 2019-01-02 A | 2019-01-03 | 44% | 20d | finish no earlier than 2019-01-03 |
| 2 |  | 详细设计 | 2d | 2019-01-02 A | 2019-01-03 | 50% | 20d | finish no earlier than 2019-01-03 |
| 3 | 3 | **PC** | 931d? | 2015-04-09 A | 2018-10-01 |  |  |  |
| 4 |  | 车道官网开发 | 20d | 2019-01-04 | 2019-01-31 |  |  |  |
| 5 |  | 维修检测标准模版开发 | 1d | 2019-01-04 | 2019-01-04 |  |  |  |
| 6 |  | 宜修店面监控报表功能开发 | 16d | 2019-01-07 | 2019-01-26 |  |  |  |
| 7 |  | 车道白皮书制作 | 10d | 2019-01-02 | 2019-01-15 |  |  |  |
| 8 |  | 系统培训支持方案编写 | 3d | 2019-01-16 | 2019-01-18 |  |  |  |
| 9 |  | 系统整体运营框架介绍 | 9d | 2019-01-16 | 2019-01-26 |  |  |  |
| 10 |  | 计次卡退款功能开发 | 1d | 2019-01-03 | 2019-01-03 |  |  |  |
| 11 |  | 储值卡退款功能开发 | 1d | 2019-01-03 | 2019-01-03 |  |  |  |
| 12 | 3.9 | **报表功能开发** | 1d | 2015-04-09 A | 2015-04-09 |  |  |  |
| 13 |  | 多租户联合报表 | 5d | 2019-01-08 | 2019-01-12 |  |  | start no earlier than 2019-01-08 |
| 14 |  | 多门店联合报表 | 5d | 2019-01-08 | 2019-01-13 |  |  |  |
| 15 |  | 仪表盘 | 4d | 2019-01-04 | 2019-01-09 |  |  |  |
| 16 |  | 营业日报 | 4d | 2019-01-04 | 2019-01-09 |  |  |  |
| 17 |  | 业务产值汇总表 | 4d | 2019-01-04 | 2019-01-09 |  |  |  |
| 18 |  | 配件销售报表 | 4d | 2019-01-04 | 2019-01-09 |  |  |  |
| 19 |  | 套餐销售报表 | 4d | 2019-01-04 | 2019-01-09 |  |  |  |
| 20 |  | 利润统计表 | 4d | 2019-01-04 | 2019-01-09 |  |  |  |
| 21 |  | 日结算报表 | 4d | 2019-01-04 | 2019-01-09 |  |  |  |
| 22 |  | 技师提成报表 | 4d | 2019-01-04 | 2019-01-09 |  |  |  |
| 23 |  | 销售提成报表 | 4d | 2019-01-04 | 2019-01-09 |  |  |  |
| 24 |  | 服务顾问提成报表 | 4d | 2019-01-04 | 2019-01-09 |  |  |  |
| 25 |  | 员工提成汇总表 | 4d | 2019-01-04 | 2019-01-09 |  |  |  |
| 26 | TKL.I.H.A.17.34 | **客户模块功能开发** | 1d? | 2015-04-09 | 2015-04-09 |  |  |  |
| 27 |  | 保养提醒 | 17d | 2019-01-04 | 2019-01-26 |  |  |  |
| 28 |  | 特别关怀 | 17d | 2019-01-04 | 2019-01-26 |  |  |  |
| 29 |  | 客户回访 | 17d | 2019-01-04 | 2019-01-26 |  |  |  |
| 30 |  | 流失回访 | 17d | 2019-01-04 | 2019-01-26 |  |  |  |
| 31 |  | 点评管理 | 17d | 2019-01-04 | 2019-01-26 |  |  |  |
| 32 |  | 客户群发 | 17d | 2019-01-04 | 2019-01-26 |  |  |  |
| 33 | TKL.I.H.A.17.17 | **供应链对接** | 1d | 2015-04-09 | 2015-04-09 |  |  |  |
| 34 |  | 开通SRM系统 | 13d | 2019-01-02 | 2019-01-18 |  |  |  |
| 35 |  | SRM库存查询 | 1d | 2019-01-02 | 2019-01-02 |  |  |  |
| 36 |  | 在SRM询价 | 13d | 2019-01-02 | 2019-01-18 |  |  |  |
| 37 |  | 在SRM下采购订单 | 13d | 2019-01-02 | 2019-01-18 |  |  |  |
| 38 |  | SRM订单入库 | 13d | 2019-01-02 | 2019-01-18 |  |  |  |
| 39 |  | 采购退货 | 13d | 2019-01-02 | 2019-01-18 |  |  |  |
| 40 | TKL.I.H.A.17.20 | **聚合收款对接** | 1d | 2015-04-09 | 2015-04-09 |  |  |  |
| 41 |  | 聚合收款申请及开通 | 6d | 2019-01-14 | 2019-01-20 |  |  |  |
| 42 |  | 多租户模式设计 | 6d | 2019-01-14 | 2019-01-20 |  |  |  |
| 43 |  | 后台APPKEY，APPID配置 | 6d | 2019-01-14 | 2019-01-20 |  |  |  |
| 44 |  | 支付订单管理 | 6d | 2019-01-14 | 2019-01-20 |  |  |  |
| 45 |  | 系统与收款对接 | 6d | 2019-01-14 | 2019-01-20 |  |  |  |
| 46 | TKL.I.H.A.17.31 | **销售机会相关开发** | 1d? | 2015-04-09 | 2015-04-09 |  |  |  |
| 47 |  | 保养到期 | 5d | 2019-01-08 | 2019-01-12 |  |  |  |
| 48 |  | 保险到期 | 5d | 2019-01-08 | 2019-01-12 |  |  |  |
| 49 |  | 违章 | 5d | 2019-01-08 | 2019-01-12 |  |  |  |
| 50 |  | 车况检查生成机会 | 5d | 2019-01-08 | 2019-01-12 |  |  |  |
| 51 |  | 报价未修，SA登记相关机会 | 5d | 2019-01-08 | 2019-01-12 |  |  |  |
| 52 |  | 维修项目周期循环机会 | 5d | 2019-01-08 | 2019-01-12 |  |  |  |
| 53 | TKL.I.H.A.17.32 | **微信开发** | 1d | 2015-04-09 | 2015-04-09 |  |  |  |
| 54 |  | 服务评价，服务进程变更模版消息 | 22d | 2019-01-02 | 2019-01-31 |  |  |  |
| 55 |  | 卡券核销，微信群发消息，微信图文消息 | 22d | 2019-01-02 | 2019-01-31 |  |  |  |
| 56 |  | 预约 | 22d | 2019-01-02 | 2019-01-31 |  |  |  |
| 57 |  | 服务履历 | 22d | 2019-01-02 | 2019-01-31 |  |  |  |
| 58 |  | 用户管理 | 22d | 2019-01-02 | 2019-01-31 |  |  |  |
| 59 |  | 服务号基础信息（服务号管理） | 22d | 2019-01-02 | 2019-01-31 |  |  |  |
| 60 | TKL.I.H.A.17.33 | **APP** | 931d? | 2015-04-09 | 2018-10-01 |  |  |  |
| 61 |  | PC端扫码登录 | 1d? | 2015-04-09 | 2015-04-09 |  |  |  |
| 62 |  | 客户模块功能开发 | 1d | 2015-04-09 | 2015-04-09 |  |  |  |
| 63 | TKL.I.H.A.17.33.24 | **客户模块功能联调** | 1d? | 2015-04-09 | 2015-04-09 |  |  |  |
| 64 |  | 客户列表 | 1d? | 2015-04-09 | 2015-04-09 |  |  |  |
| 65 |  | 保养提醒 | 1d? | 2015-04-09 | 2015-04-09 |  |  |  |
| 66 |  | 年检到期提醒 | 1d? | 2015-04-09 | 2015-04-09 |  |  |  |
| 67 |  | 商业险到期提醒 | 1d? | 2015-04-09 | 2015-04-09 |  |  |  |
| 68 |  | 交强险到期提醒 | 1d? | 2015-04-09 | 2015-04-09 |  |  |  |
| 69 |  | 客户生日提醒 | 1d? | 2015-04-09 | 2015-04-09 |  |  |  |
| 70 |  | 驾照年审提醒 | 1d? | 2015-04-09 | 2015-04-09 |  |  |  |

| ID | WBS | Task | Duration | Start | Finish | Complete | Total float | Constraint |
| --- | --- | --- | --- | --- | --- | --- | --- | --- |
| 71 |  | 客户回访 | 1d? | 2015-04-09 | 2015-04-09 |  |  |  |
| 72 |  | 流失回访 | 1d? | 2015-04-09 | 2015-04-09 |  |  |  |
| 73 | TKL.I.H.A.17.33.26 | **报表模块功能开发** | 1d? | 2015-04-09 | 2015-04-09 |  |  |  |
| 74 |  | 首页 | 1d? | 2015-04-09 | 2015-04-09 |  |  |  |
| 75 |  | 绩效提成报表 | 1d? | 2015-04-09 | 2015-04-09 |  |  |  |
| 76 |  | 营业统计 | 1d? | 2015-04-09 | 2015-04-09 |  |  |  |
| 77 |  | 工单汇总报表 | 1d? | 2015-04-09 | 2015-04-09 |  |  |  |
| 78 |  | 充值办卡报表 | 1d? | 2015-04-09 | 2015-04-09 |  |  |  |
| 79 |  | 收款款报表 | 1d? | 2015-04-09 | 2015-04-09 |  |  |  |
| 80 |  | 客服SR集成到车道 | 1d? | 2015-04-09 | 2015-04-09 |  |  |  |
| 81 | 4 | **测试** | 6d | 2015-04-09 A | 2015-04-16 |  |  |  |
| 82 | 4.1 | **功能测试** | 0.5d | 2015-04-09 A | 2015-04-09 |  |  |  |
| 83 |  | APP采购模块测试 | 1d? | 2015-04-09 | 2015-04-09 |  |  |  |
| 84 |  | APP库存模块测试 | 1d? | 2015-04-09 | 2015-04-09 |  |  |  |
| 85 |  | APP应收模块测试 | 1d? | 2015-04-09 | 2015-04-09 |  |  |  |
| 86 |  | APP报表模块测试 | 1d? | 2015-04-09 | 2015-04-09 |  |  |  |
| 87 |  | APP客户模块测试 | 1d? | 2015-04-09 | 2015-04-09 |  |  |  |
| 88 |  | PC端客户模块测试 | 1d? | 2015-04-09 | 2015-04-09 |  |  |  |
| 89 |  | PC端报表模块测试 | 1d? | 2015-04-09 | 2015-04-09 |  |  |  |
| 90 |  | 微信后台管理相关功能测试 | 1d? | 2015-04-09 | 2015-04-09 |  |  |  |
| 91 |  | 集成测试 | 3d | 2015-04-09 | 2015-04-13 |  |  | start no earlier than 2018-10-11 |
| 92 | 5 | **试运行** | 1d? | 2015-04-09 | 2015-04-09 |  |  |  |
| 93 |  | 试运行申请 | 0d? | 2018-10-16 A | 2018-10-16 A | 100% |  |  |
| 94 |  | 发布试运行 | 28d | 2015-02-28 | 2015-04-08 |  | 1019d | start no earlier than 2015-02-28 |
| 95 | 6 | **项目总结** | 1d? | 2015-04-09 | 2015-04-09 |  |  |  |
| 96 |  | 项目总结会议 | 1d? | 2015-04-09 | 2015-04-09 |  | 0d |  |
| 97 | 7 | **项目归档** | 1d? | 2015-04-09 | 2015-04-09 |  |  |  |
| 98 |  | 项目文档归档 | 1d? | 2015-04-09 | 2015-04-09 |  | 0d |  |

## Version 2 (data date 2019-01-03, saved 2019-01-03)

Note of the change: Merge branch 'master' of http://git.harsonserver.com/guine/DMS

Last finish 2019-01-31 → 2022-07-26 (+1272d). Complete tasks 1 → 9.

Removed: 91 集成测试; 95 项目总结; 96 项目总结会议; 97 项目归档; 98 项目文档归档

Changed:

| ID | Task | Start | Finish | Duration | Complete | Total float | Other |
| --- | --- | --- | --- | --- | --- | --- | --- |
| 1 | 需求分析 |  | 2019-01-03 A |  | 44% → 100% | 20d → none |  |
| 2 | 详细设计 |  | 2019-01-03 A |  | 50% → 100% | 20d → none |  |
| 3 | **PC** | 2015-04-09 A → 2019-01-02 A (+1364d) | 2018-10-01 → 2019-01-31 (+122d) | 931d? → 23d | 0% → 6% |  |  |
| 4 | 车道官网开发 |  | 2019-01-31 → 2019-01-30 (-1d) |  |  |  |  |
| 6 | 宜修店面监控报表功能开发 |  | 2019-01-26 → 2019-01-25 (-1d) |  |  |  |  |
| 7 | 车道白皮书制作 | 2019-01-02 A | 2019-01-15 → 2019-01-14 (-1d) |  | 0% → 20% |  |  |
| 10 | 计次卡退款功能开发 | 2019-01-03 A | 2019-01-03 A |  | 0% → 100% |  |  |
| 11 | 储值卡退款功能开发 | 2019-01-03 A | 2019-01-03 A |  | 0% → 100% |  |  |
| 12 | **报表功能开发** | 2015-04-09 A → 2019-01-02 A (+1364d) | 2015-04-09 → 2019-01-02 (+1364d) |  |  |  |  |
| 14 | 多门店联合报表 |  | 2019-01-13 → 2019-01-12 (-1d) |  |  |  |  |
| 26 | **客户模块功能开发** | 2015-04-09 → 2019-01-02 (+1364d) | 2015-04-09 → 2019-01-02 (+1364d) |  |  |  |  |
| 27 | 保养提醒 |  | 2019-01-26 → 2019-01-25 (-1d) |  |  |  |  |
| 28 | 特别关怀 |  | 2019-01-26 → 2019-01-25 (-1d) |  |  |  |  |
| 29 | 客户回访 |  | 2019-01-26 → 2019-01-25 (-1d) |  |  |  |  |
| 30 | 流失回访 |  | 2019-01-26 → 2019-01-25 (-1d) |  |  |  |  |
| 31 | 点评管理 |  | 2019-01-26 → 2019-01-25 (-1d) |  |  |  |  |
| 32 | 客户群发 |  | 2019-01-26 → 2019-01-25 (-1d) |  |  |  |  |
| 33 | **供应链对接** | 2015-04-09 → 2019-01-02 A (+1364d) | 2015-04-09 → 2019-01-02 (+1364d) |  | 0% → 17% |  |  |
| 34 | 开通SRM系统 | 2019-01-02 A | 2019-01-18 → 2019-01-17 (-1d) |  | 0% → 15% |  |  |
| 35 | SRM库存查询 | 2019-01-02 A | 2019-01-02 A |  | 0% → 100% |  |  |
| 36 | 在SRM询价 | 2019-01-02 A | 2019-01-18 → 2019-01-17 (-1d) |  | 0% → 15% |  |  |
| 37 | 在SRM下采购订单 | 2019-01-02 A | 2019-01-18 → 2019-01-17 (-1d) |  | 0% → 15% |  |  |
| 38 | SRM订单入库 | 2019-01-02 A | 2019-01-18 → 2019-01-17 (-1d) |  | 0% → 15% |  |  |
| 39 | 采购退货 | 2019-01-02 A | 2019-01-18 → 2019-01-17 (-1d) |  | 0% → 15% |  |  |
| 40 | **聚合收款对接** | 2015-04-09 → 2019-01-02 (+1364d) | 2015-04-09 → 2019-01-02 (+1364d) |  |  |  |  |
| 46 | **销售机会相关开发** | 2015-04-09 → 2019-01-02 (+1364d) | 2015-04-09 → 2019-01-02 (+1364d) |  |  |  |  |
| 53 | **微信开发** | 2015-04-09 → 2019-01-02 A (+1364d) | 2015-04-09 → 2019-01-02 (+1364d) |  | 0% → 9% |  |  |
| 54 | 服务评价，服务进程变更模版消息 | 2019-01-02 A | 2019-01-31 → 2019-01-30 (-1d) |  | 0% → 9% |  |  |
| 55 | 卡券核销，微信群发消息，微信图文消息 | 2019-01-02 A | 2019-01-31 → 2019-01-30 (-1d) |  | 0% → 9% |  |  |
| 56 | 预约 | 2019-01-02 A | 2019-01-31 → 2019-01-30 (-1d) |  | 0% → 9% |  |  |
| 57 | 服务履历 | 2019-01-02 A | 2019-01-31 → 2019-01-30 (-1d) |  | 0% → 9% |  |  |
| 58 | 用户管理 | 2019-01-02 A | 2019-01-31 → 2019-01-30 (-1d) |  | 0% → 9% |  |  |
| 59 | 服务号基础信息（服务号管理） | 2019-01-02 A | 2019-01-31 → 2019-01-30 (-1d) |  | 0% → 9% |  |  |
| 60 | **APP** | 2015-04-09 → 2019-01-02 A (+1364d) | 2018-10-01 → 2022-07-26 (+1394d) |  | 0% → 10% |  |  |
| 61 | PC端扫码登录 | 2015-04-09 → 2019-01-04 (+1366d) | 2015-04-09 → 2019-01-05 (+1367d) | 1d? → 2d |  |  |  |
| 62 | 客户模块功能开发 | 2015-04-09 → 2019-01-03 A (+1365d) | 2015-04-09 → 2019-01-17 (+1379d) | 1d → 12d | 0% → 8% |  |  |
| 63 | **客户模块功能联调** | 2015-04-09 → 2019-01-02 (+1364d) | 2015-04-09 → 2019-01-02 (+1364d) |  | 0% → 8% |  |  |
| 64 | 客户列表 | 2015-04-09 → 2019-01-03 A (+1365d) | 2015-04-09 → 2019-01-17 (+1379d) | 1d? → 12d | 0% → 8% |  |  |
| 65 | 保养提醒 | 2015-04-09 → 2019-01-03 A (+1365d) | 2015-04-09 → 2019-01-17 (+1379d) | 1d? → 12d | 0% → 8% |  |  |
| 66 | 年检到期提醒 | 2015-04-09 → 2019-01-03 A (+1365d) | 2015-04-09 → 2019-01-17 (+1379d) | 1d? → 12d | 0% → 8% |  |  |
| 67 | 商业险到期提醒 | 2015-04-09 → 2019-01-03 A (+1365d) | 2015-04-09 → 2019-01-17 (+1379d) | 1d? → 12d | 0% → 8% |  |  |
| 68 | 交强险到期提醒 | 2015-04-09 → 2019-01-03 A (+1365d) | 2015-04-09 → 2019-01-17 (+1379d) | 1d? → 12d | 0% → 8% |  |  |
| 69 | 客户生日提醒 | 2015-04-09 → 2019-01-03 A (+1365d) | 2015-04-09 → 2019-01-17 (+1379d) | 1d? → 12d | 0% → 8% |  |  |
| 70 | 驾照年审提醒 | 2015-04-09 → 2019-01-03 A (+1365d) | 2015-04-09 → 2019-01-17 (+1379d) | 1d? → 12d | 0% → 8% |  |  |
| 71 | 客户回访 | 2015-04-09 → 2019-01-03 A (+1365d) | 2015-04-09 → 2019-01-17 (+1379d) | 1d? → 12d | 0% → 8% |  |  |
| 72 | 流失回访 | 2015-04-09 → 2019-01-03 A (+1365d) | 2015-04-09 → 2019-01-17 (+1379d) | 1d? → 12d | 0% → 8% |  |  |
| 73 | **报表模块功能开发** | 2015-04-09 → 2019-01-02 (+1364d) | 2015-04-09 → 2019-01-02 (+1364d) |  | 0% → 50% |  |  |
| 74 | 首页 | 2015-04-09 → 2019-01-03 A (+1365d) | 2015-04-09 → 2019-01-03 A (+1365d) | 1d? → 1d | 0% → 100% |  |  |
| 75 | 绩效提成报表 | 2015-04-09 → 2019-01-03 A (+1365d) | 2015-04-09 → 2019-01-03 A (+1365d) | 1d? → 1d | 0% → 100% |  |  |
| 76 | 营业统计 | 2015-04-09 → 2019-01-03 A (+1365d) | 2015-04-09 → 2019-01-03 A (+1365d) | 1d? → 1d | 0% → 100% |  |  |
| 77 | 工单汇总报表 | 2015-04-09 → 2019-01-04 (+1366d) | 2015-04-09 → 2019-01-04 (+1366d) | 1d? → 1d |  |  |  |
| 78 | 充值办卡报表 | 2015-04-09 → 2019-01-04 (+1366d) | 2015-04-09 → 2019-01-04 (+1366d) | 1d? → 1d |  |  |  |
| 79 | 收款款报表 | 2015-04-09 → 2019-01-04 (+1366d) | 2015-04-09 → 2019-01-04 (+1366d) | 1d? → 1d |  |  |  |
| 80 | 客服SR集成到车道 | 2015-04-09 → 2019-02-13 (+1406d) | 2015-04-09 → 2019-03-31 (+1452d) | 1d? → 34d |  |  |  |
| 81 | **测试** | 2015-04-09 A → 2019-01-02 A (+1364d) | 2015-04-16 → 2019-01-09 (+1364d) |  | 0% → 11% |  |  |
| 82 | **功能测试** | 2015-04-09 A → 2019-01-02 A (+1364d) | 2015-04-09 → 2019-01-02 (+1364d) |  | 0% → 11% |  |  |
| 83 | APP采购模块测试 | 2015-04-09 → 2019-01-03 A (+1365d) | 2015-04-09 → 2019-01-05 (+1367d) | 1d? → 3d | 0% → 33% |  |  |
| 84 | APP库存模块测试 | 2015-04-09 → 2019-01-03 A (+1365d) | 2015-04-09 → 2019-01-05 (+1367d) | 1d? → 3d | 0% → 33% |  |  |
| 85 | APP应收模块测试 | 2015-04-09 → 2019-01-03 A (+1365d) | 2015-04-09 → 2019-01-05 (+1367d) | 1d? → 3d | 0% → 33% |  |  |
| 86 | APP报表模块测试 | 2015-04-09 → 2019-01-03 A (+1365d) | 2015-04-09 → 2019-01-05 (+1367d) | 1d? → 3d | 0% → 33% |  |  |
| 87 | APP客户模块测试 | 2015-04-09 → 2019-01-03 A (+1365d) | 2015-04-09 → 2019-01-17 (+1379d) | 1d? → 12d | 0% → 8% |  |  |
| 88 | PC端客户模块测试 | 2015-04-09 → 2019-01-03 A (+1365d) | 2015-04-09 → 2019-01-17 (+1379d) | 1d? → 12d | 0% → 8% |  |  |
| 89 | PC端报表模块测试 | 2015-04-09 → 2019-01-03 A (+1365d) | 2015-04-09 → 2019-01-17 (+1379d) | 1d? → 12d | 0% → 8% |  |  |
| 90 | 微信后台管理相关功能测试 | 2015-04-09 → 2019-02-12 (+1405d) | 2015-04-09 → 2019-02-28 (+1421d) | 1d? → 13d |  |  |  |
| 91 | **试运行** | 2015-04-09 → 2019-01-02 (+1364d) | 2015-04-09 → 2019-01-02 (+1364d) |  |  |  |  |
| 92 | 试运行申请 | 2018-10-16 A → 2019-01-12 A (+88d) | 2018-10-16 A → 2019-01-12 A (+88d) |  |  |  |  |
| 93 | 发布试运行 | 2015-02-28 → 2019-01-12 (+1414d) | 2015-04-08 → 2019-01-12 (+1375d) | 28d → 1d |  | 1019d → 922d | constraint start no earlier than 2015-02-28 → finish no earlier than 2019-01-12 |
